# AndroidMapper_WBS--Fixed Work_fromWeston--resourceLeveled

Schedule from MS Project, 2012-02-02 to 2012-05-17.

## Calendars

- Student Calendar: Mon-Fri 18:00-20:00; Sat-Sun off. Exceptions (off unless hours are given): 2012-02-25 12:00-19:00 (MPP), 2012-02-28 to 2012-03-06 18:00-19:00 (Midterm), 2012-03-12 to 2012-03-16 18:00-19:00 (Spring Break).
- 24 Hours: Mon-Sun 00:00-24:00.

## Resources

| Resource |
| --- |
| Developer |
| Analyst |

## Schedule

| ID | WBS | Task | Type | Duration | Start | Finish | Predecessors | Baseline start | Baseline finish | Baseline duration | Total slack | Free slack | Constraint | Calendar | Resources | Work | Owner |
| --- | --- | --- | --- | --- | --- | --- | --- | --- | --- | --- | --- | --- | --- | --- | --- | --- | --- |
| 1 | 1 | **Android Mapper** |  | 15.5d | 2012-02-02 | 2012-05-01 |  | 2012-02-02 | 2012-05-01 | 14.62d | 0.19d |  |  |  |  | 889.5h |  |
| 2 | 1.1 | **Project Mangement** |  | 15.5d | 2012-02-02 | 2012-05-01 |  | 2012-02-02 | 2012-05-01 | 14.62d | 0.19d |  |  |  |  | 724h |  |
| 3 | 1.1.1 | Start Project | milestone | 0h | 2012-02-02 | 2012-02-02 |  | 2012-02-02 | 2012-02-02 | 0h | 0.19d | 0d |  |  |  |  |  |
| 4 | 1.1.2 | End Project | milestone | 0d | 2012-05-01 | 2012-05-01 | 33, 51, 24, 21, 81, 23, 88, 82 | 2012-05-01 | 2012-05-01 | 0d | 3.25d |  |  |  |  |  |  |
| 5 | 1.1.3 | **Statement of Work** |  | 4.12d | 2012-02-02 | 2012-02-24 |  | 2012-02-02 | 2012-02-15 | 2.5d | 0.06d |  |  |  |  | 132h |  |
| 6 | 1.1.3.1 | Prepare UMN SOW |  | 13h | 2012-02-16 | 2012-02-24 | 3, 26FF | 2012-02-03 | 2012-02-14 | 13h | 0.06d | 0d |  |  | Analyst [200%]; Developer [200%] | 52h | Ian |
| 7 | 1.1.3.2 | Prepare Minneapolis Skyway SOW |  | 20h | 2012-02-02 | 2012-02-15 | 3, 26FF | 2012-02-02 | 2012-02-15 | 20h | 1.69d | 1.62d |  |  | Analyst; Developer [300%] | 80h | Kristin |
| 8 | 1.1.4 | Prepare Master Project Plan |  | 12.5h | 2012-02-24 | 2012-03-01 | 27FF, 6, 7 | 2012-02-17 | 2012-02-28 | 12.5h | 0.06d | 0d |  |  | Analyst [300%]; Developer [500%] | 100h | Weston |
| 9 | 1.1.5 | **Team Meeting** |  | 231.25d | 2012-02-11 | 2012-04-28 |  | 2012-02-11 | 2012-04-28 | 231.25d | 58.25d |  |  | 24 Hours |  | 192h |  |
| 10 | 1.1.5.1 | Team Meeting 1 |  | 2h | 2012-02-11 | 2012-02-11 | 3 | 2012-02-11 | 2012-02-11 | 2h | 286.5d | 1.25d | start no earlier than 2012-02-11 | 24 Hours |  | 16h |  |
| 11 | 1.1.5.2 | Team Meeting 2 |  | 2h | 2012-02-18 | 2012-02-18 | 10 | 2012-02-18 | 2012-02-18 | 2h | 265.75d | 1.25d | start no earlier than 2012-02-18 | 24 Hours |  | 16h |  |
| 12 | 1.1.5.3 | Team Meeting 3 |  | 2h | 2012-02-25 | 2012-02-25 | 11 | 2012-02-25 | 2012-02-25 | 2h | 245d | 1.62d | start no earlier than 2012-02-25 | 24 Hours |  | 16h |  |
| 13 | 1.1.5.4 | Team Meeting 4 |  | 2h | 2012-03-03 | 2012-03-03 | 12 | 2012-03-03 | 2012-03-03 | 2h | 224.25d | 1.25d | start no earlier than 2012-03-03 | 24 Hours |  | 16h |  |
| 14 | 1.1.5.5 | Team Meeting 5 |  | 2h | 2012-03-10 | 2012-03-10 | 13 | 2012-03-10 | 2012-03-10 | 2h | 203.5d | 0.62d | start no earlier than 2012-03-10 | 24 Hours |  | 16h |  |
| 15 | 1.1.5.6 | Team Meeting 6 |  | 2h | 2012-03-17 | 2012-03-17 | 14 | 2012-03-17 | 2012-03-17 | 2h | 182.75d | 1.25d | start no earlier than 2012-03-17 | 24 Hours |  | 16h |  |
| 16 | 1.1.5.7 | Team Meeting 7 |  | 2h | 2012-03-24 | 2012-03-24 | 15 | 2012-03-24 | 2012-03-24 | 2h | 162d | 1.25d | start no earlier than 2012-03-24 | 24 Hours |  | 16h |  |
| 17 | 1.1.5.8 | Team Meeting 8 |  | 2h | 2012-03-31 | 2012-03-31 | 16 | 2012-03-31 | 2012-03-31 | 2h | 141.25d | 1.25d | start no earlier than 2012-03-31 | 24 Hours |  | 16h |  |
| 18 | 1.1.5.9 | Team Meeting 9 |  | 2h | 2012-04-07 | 2012-04-07 | 17 | 2012-04-07 | 2012-04-07 | 2h | 120.5d | 1.25d | start no earlier than 2012-04-07 | 24 Hours |  | 16h |  |
| 19 | 1.1.5.10 | Team Meeting 10 |  | 2h | 2012-04-14 | 2012-04-14 | 18 | 2012-04-14 | 2012-04-14 | 2h | 99.75d | 1.25d | start no earlier than 2012-04-14 | 24 Hours |  | 16h |  |
| 20 | 1.1.5.11 | Team Meeting 11 |  | 2h | 2012-04-21 | 2012-04-21 | 19 | 2012-04-21 | 2012-04-21 | 2h | 79d | 1.25d | start no earlier than 2012-04-21 | 24 Hours |  | 16h |  |
| 21 | 1.1.5.12 | Team Meeting 12 |  | 2h | 2012-04-28 | 2012-04-28 | 20 | 2012-04-28 | 2012-04-28 | 2h | 58.25d | 0.25d | start no earlier than 2012-04-28 | 24 Hours |  | 16h |  |
| 22 | 1.1.6 | Prepare Status Report |  | 12.5h | 2012-03-21 | 2012-04-03 | 8, 28FF | 2012-03-23 | 2012-04-03 | 12.5h | 6.69d | 2.19d |  |  | Analyst [300%]; Developer [500%] | 100h | Kristin |
| 23 | 1.1.7 | Prepare Presentation |  | 12.5h | 2012-04-13 | 2012-04-24 | 29FF, 22 | 2012-04-13 | 2012-04-24 | 12.5h | 4.5d | 1.25d |  |  | Analyst [300%]; Developer [500%] | 100h | Jared |
| 24 | 1.1.8 | Prepare Final Project Report |  | 12.5h | 2012-04-20 | 2012-05-01 | 30FF, 8 | 2012-04-20 | 2012-05-01 | 12.5h | 3.25d | 0d |  |  | Analyst [300%]; Developer [500%] | 100h | Ian |

| ID | WBS | Task | Type | Duration | Start | Finish | Predecessors | Baseline start | Baseline finish | Baseline duration | Total slack | Free slack | Constraint | Resources | Work | Owner |
| --- | --- | --- | --- | --- | --- | --- | --- | --- | --- | --- | --- | --- | --- | --- | --- | --- |
| 25 | 1.1.9 | **Project Deliverable Due Dates** |  | 13.5d | 2012-02-14 | 2012-05-01 |  | 2012-02-14 | 2012-05-01 | 12.62d | 0d |  |  |  |  |  |
| 26 | 1.1.9.1 | Statement of Work Due | milestone, manual | 0h | 2012-02-14 | 2012-02-14 |  | 2012-02-14 | 2012-02-14 | 0h |  |  |  |  |  |  |
| 27 | 1.1.9.2 | Master Project Plan Due | milestone, manual | 0h | 2012-02-28 | 2012-02-28 |  | 2012-02-28 | 2012-02-28 | 0h |  |  | start no earlier than 2012-02-28 |  |  |  |
| 28 | 1.1.9.3 | Status Report Due | milestone, manual | 0h | 2012-04-03 | 2012-04-03 |  | 2012-04-03 | 2012-04-03 | 0h |  |  |  |  |  |  |
| 29 | 1.1.9.4 | Presentation Due | milestone, manual | 0h | 2012-04-24 | 2012-04-24 |  | 2012-04-24 | 2012-04-24 | 0h |  |  |  |  |  |  |
| 30 | 1.1.9.5 | Final Project Report Due | milestone, manual | 0h | 2012-05-01 | 2012-05-01 |  | 2012-05-01 | 2012-05-01 | 0h |  |  |  |  |  |  |
| 31 | 1.2 | **Environment Setup** |  | 4.44d | 2012-02-27 | 2012-03-21 |  | 2012-02-27 | 2012-03-21 | 4.44d |  |  |  |  | 45h |  |
| 32 | 1.2.1 | Start Environmental Set-up | milestone | 0d | 2012-03-01 | 2012-03-01 | 8 | 2012-02-28 | 2012-02-28 | 0d | 0.06d | 0d |  |  |  |  |
| 33 | 1.2.2 | End Environmental Set-up | milestone | 0h | 2012-03-12 | 2012-03-12 | 45, 44, 42, 38, 35 | 2012-03-16 | 2012-03-16 | 0h | 0.06d | 0d |  |  |  |  |
| 34 | 1.2.3 | Create GitHub respository |  | 0.5h | 2012-03-02 | 2012-03-02 | 32 | 2012-02-28 | 2012-02-28 | 0.5h | 0.38d | 0d |  | Developer | 0.5h | Weston |
| 35 | 1.2.4 | Set Up MonkeyRunner |  | 5h | 2012-03-02 | 2012-03-07 | 32 | 2012-02-28 | 2012-03-03 | 5h | 0.88d | 0.81d |  | Developer | 5h | Usha |
| 36 | 1.2.5 | **Personal Environments** |  | 1.56d | 2012-03-01 | 2012-03-12 |  | 2012-02-28 | 2012-03-16 | 2.31d | 0.06d |  |  |  | 34.5h |  |
| 37 | 1.2.5.1 | Personal Environment Set-up Started | milestone | 0h | 2012-03-01 | 2012-03-01 | 32 | 2012-02-28 | 2012-02-28 | 0h | 2.62d |  |  |  |  |  |
| 38 | 1.2.5.2 | Get google maps api developer key |  | 0.5h | 2012-03-12 | 2012-03-12 | 42 | 2012-03-16 | 2012-03-16 | 0.5h | 0.06d | 0d |  | Analyst | 0.5h | Sriram |
| 39 | 1.2.5.3 | Set-up Eclipse with Android SDK, eclEmma, and JUnit Plug-ins |  | 2h | 2012-03-01 | 2012-03-03 | 32 | 2012-02-28 | 2012-03-07 | 10h | 0.06d | 0d |  | Analyst [300%]; Developer [500%] | 16h | Jared |
| 40 | 1.2.5.4 | Set-up Eclipse Projects |  | 10h | 2012-03-03 | 2012-03-12 | 39 |  |  |  | 0.06d | 0d |  | Developer | 10h | Ian |
| 41 | 1.2.5.5 | Set-up Git |  | 8h | 2012-03-03 | 2012-03-09 | 39, 34 | 2012-03-08 | 2012-03-15 | 8h | 0.31d | 0.25d |  | Developer | 8h | Weston |
| 42 | 1.2.5.6 | Personal Environments Established | milestone | 0h | 2012-03-12 | 2012-03-12 | 41, 40 | 2012-03-15 | 2012-03-15 | 0h | 0.06d | 0d |  |  |  |  |
| 43 | 1.2.6 | **Automated build** |  | 0.44d | 2012-03-02 | 2012-03-05 |  | 2012-02-28 | 2012-03-02 | 0.44d | 1.06d |  |  |  | 5h |  |
| 44 | 1.2.6.1 | Ant Script |  | 2h | 2012-03-02 | 2012-03-04 | 32 | 2012-02-28 | 2012-02-29 | 2h | 1.25d | 1.19d |  | Developer | 2h | Ian |
| 45 | 1.2.6.2 | Create account w/ Travis-CI |  | 3h | 2012-03-03 | 2012-03-05 | 34 | 2012-02-28 | 2012-03-02 | 3h | 1.06d | 1d |  | Developer | 3h | Weston |
| 46 | 1.3 | **Application** |  | 6.5d | 2012-03-12 | 2012-04-20 |  | 2012-03-16 | 2012-04-16 | 5.19d | 0d |  |  |  | 72.5h |  |
| 47 | 1.3.1 | Start Application Work | milestone | 0h | 2012-03-12 | 2012-03-12 | 33 | 2012-03-16 | 2012-03-16 | 0h | 0.06d | 0d |  |  |  |  |
| 48 | 1.3.2 | Device Testing: Feature Set 1 | milestone | 0h | 2012-03-19 | 2012-03-19 | 76, 47 |  |  |  | 5.5d | 1.25d |  |  |  |  |
| 49 | 1.3.3 | Device Testing: Feature Set 2 | milestone | 0h | 2012-03-27 | 2012-03-27 | 77, 48 |  |  |  | 4.25d |  |  |  |  |  |
| 50 | 1.3.4 | Device Testing: Feature Set 3 | milestone | 0h | 2012-04-20 | 2012-04-20 | 78, 49 |  |  |  | 0d |  |  |  |  |  |
| 51 | 1.3.5 | End Application Work | milestone | 0h | 2012-04-20 | 2012-04-20 | 57, 58, 62, 63, 64, 65, 66, 67, 68, 73, 74, 76, 77, 78, 50 | 2012-04-16 | 2012-04-16 | 0h | 0d |  |  |  |  |  |

| ID | WBS | Task | Duration | Start | Finish | Predecessors | Baseline start | Baseline finish | Baseline duration | Total slack | Free slack | Constraint | Resources | Work | Owner |
| --- | --- | --- | --- | --- | --- | --- | --- | --- | --- | --- | --- | --- | --- | --- | --- |
| 52 | 1.3.6 | **Framework** | 2.06d | 2012-03-13 | 2012-03-27 |  | 2012-03-16 | 2012-04-04 | 3.31d | 0.06d |  |  |  | 41.5h |  |
| 53 | 1.3.6.1 | Show Map | 1.5h | 2012-03-13 | 2012-03-14 | 47 | 2012-03-16 | 2012-03-19 | 1.5h | 0.06d | 0d |  | Developer | 1.5h | Jon |
| 54 | 1.3.6.2 | **Locate Position** | 0.38d | 2012-03-13 | 2012-03-15 |  | 2012-03-16 | 2012-03-20 | 0.38d | 0.5d |  |  |  | 3.5h |  |
| 55 | 1.3.6.2.1 | Get Position | 2h | 2012-03-13 | 2012-03-14 | 47 | 2012-03-16 | 2012-03-19 | 2h | 0.5d | 0d |  | Developer | 2h | Kristin |
| 56 | 1.3.6.2.2 | Show Position | 1h | 2012-03-15 | 2012-03-15 | 55, 53 | 2012-03-19 | 2012-03-20 | 1h | 0.5d | 0d |  | Developer | 1h | Ian |
| 57 | 1.3.6.2.3 | Notify User Of Inability to Position | 0.5h | 2012-03-15 | 2012-03-15 | 55 | 2012-03-19 | 2012-03-19 | 0.5h | 5.56d | 0.06d |  | Developer | 0.5h | Ian |
| 58 | 1.3.6.3 | Load Appropriate Map | 2h | 2012-03-20 | 2012-03-21 | 70, 72 | 2012-03-22 | 2012-03-22 | 2h | 5.44d |  |  | Developer | 2h | Usha |
| 59 | 1.3.6.4 | Locate Destination | 5h | 2012-03-14 | 2012-03-20 | 53 | 2012-03-19 | 2012-03-21 | 5h | 0.06d | 0d |  | Developer | 5h | Usha |
| 60 | 1.3.6.5 | Route to Destination | 10h | 2012-03-20 | 2012-03-27 | 70, 72, 59, 56 | 2012-03-22 | 2012-04-04 | 20h | 0.06d | 0d |  | Developer | 10h | Jon |
| 61 | 1.3.6.6 | Update current location | 1h | 2012-03-16 | 2012-03-16 | 56 | 2012-03-20 | 2012-03-20 | 1h | 1.62d | 1.56d |  | Developer | 1h | Kristin |
| 62 | 1.3.6.7 | Allow Zooming and Panning | 0.5h | 2012-03-14 | 2012-03-14 | 53 | 2012-03-19 | 2012-03-19 | 0.5h | 6.25d |  |  | Developer | 0.5h | Kristin |
| 63 | 1.3.6.8 | Manage Favorites | 8h | 2012-03-20 | 2012-03-26 | 59 | 2012-03-22 | 2012-03-27 | 8h | 4.69d |  |  | Developer | 8h | Usha |
| 64 | 1.3.6.9 | Save History | 3h | 2012-03-20 | 2012-03-21 | 59 | 2012-03-22 | 2012-03-23 | 3h | 5.31d |  |  | Developer | 3h | Usha |
| 65 | 1.3.6.10 | Change Layout by Screen Orientation | 3h | 2012-03-13 | 2012-03-15 | 47 | 2012-03-16 | 2012-03-20 | 3h | 6.12d |  |  | Developer | 3h | Jon |
| 66 | 1.3.6.11 | Display Help | 3h | 2012-03-13 | 2012-03-15 | 47 | 2012-03-16 | 2012-03-20 | 3h | 6.12d |  |  | Developer | 3h | Ian |
| 67 | 1.3.6.12 | Resume Previous State | 0.5h | 2012-03-13 | 2012-03-13 | 47 | 2012-03-16 | 2012-03-16 | 0.5h | 6.44d |  |  | Developer | 0.5h | Ian |
| 68 | 1.3.6.13 | Display Keyboard | 0.5h | 2012-03-20 | 2012-03-20 | 59 | 2012-03-22 | 2012-03-22 | 0.5h | 5.62d |  |  | Developer | 0.5h | Usha |
| 69 | 1.3.7 | **Mpls Map** | 0.62d | 2012-03-14 | 2012-03-20 |  | 2012-03-19 | 2012-03-21 | 0.62d | 0.06d |  |  |  | 5h |  |
| 70 | 1.3.7.1 | Overlay Minnapolis Skyway Map | 5h | 2012-03-14 | 2012-03-20 | 53 | 2012-03-19 | 2012-03-21 | 5h | 0.06d | 0d |  | Analyst | 5h | Andrey |
| 71 | 1.3.8 | **UMN Twin Cities Map** | 6.25d | 2012-03-14 | 2012-04-19 |  | 2012-03-19 | 2012-04-13 | 4.75d | 0.06d |  |  |  | 21h |  |
| 72 | 1.3.8.1 | Overlay Campus Map | 5h | 2012-03-14 | 2012-03-20 | 53 | 2012-03-19 | 2012-03-21 | 5h | 0.06d | 0d |  | Analyst | 5h | Jared |
| 73 | 1.3.8.2 | Indicate Tunnel vs. Skyway | 3h | 2012-03-20 | 2012-04-03 | 72 | 2012-03-22 | 2012-03-23 | 3h | 3.06d |  |  | Analyst | 3h | Jared |
| 74 | 1.3.8.3 | Indicate Floor Change | 13h | 2012-03-27 | 2012-04-19 | 60, 61 | 2012-04-05 | 2012-04-13 | 13h | 0.06d |  |  | Analyst | 13h | Jared |
| 75 | 1.3.9 | **Device Field Testing** | 6.12d | 2012-03-16 | 2012-04-20 |  | 2012-03-22 | 2012-04-16 | 4.38d | 0d |  |  |  | 5h |  |
| 76 | 1.3.9.1 | Verify app basic functionality | 1.5h | 2012-03-16 | 2012-03-19 | 53, 55, 56, 57 | 2012-03-22 | 2012-03-22 | 1.5h | 5.5d | 0d |  | Analyst | 1.5h | Sriram |
| 77 | 1.3.9.2 | Verfiy app routing functionality | 1.5h | 2012-03-26 | 2012-03-27 | 76, 48 | 2012-04-05 | 2012-04-05 | 1.5h | 4.25d | 0d | finish no earlier than 2012-03-27 | Analyst | 1.5h | Andrey |
| 78 | 1.3.9.3 | Verify app complete functionality | 2h | 2012-04-19 | 2012-04-20 | 77, 49 | 2012-04-13 | 2012-04-16 | 2h | 0d |  | finish no earlier than 2012-04-20 | Analyst | 2h | Jared |

| ID | WBS | Task | Type | Duration | Start | Finish | Predecessors | Baseline start | Baseline finish | Baseline duration | Total slack | Free slack | Resources | Work | Owner |
| --- | --- | --- | --- | --- | --- | --- | --- | --- | --- | --- | --- | --- | --- | --- | --- |
| 79 | 1.4 | **Deployment** |  | 9.31d | 2012-03-01 | 2012-04-26 |  | 2012-02-28 | 2012-04-20 | 8.62d | 3.75d |  |  | 48h |  |
| 80 | 1.4.1 | Create Marketplace Material |  | 2h | 2012-03-02 | 2012-03-04 | 32 | 2012-02-28 | 2012-02-29 | 2h | 12.31d | 8.44d | Analyst | 2h | Andrey |
| 81 | 1.4.2 | Upload to Android Marketplace |  | 3h | 2012-04-25 | 2012-04-26 | 85, 80 | 2012-04-19 | 2012-04-20 | 3h | 3.88d | 0.62d | Developer | 3h | Weston |
| 82 | 1.4.3 | User Documentation |  | 10h | 2012-04-20 | 2012-04-26 | 51 |  |  |  | 3.75d | 0.5d | Analyst; Developer | 20h |  |
| 83 | 1.4.4 | **Package application for marketplace** |  | 0.75d | 2012-04-20 | 2012-04-24 |  | 2012-04-16 | 2012-04-19 | 0.75d | 3.88d |  |  | 6h |  |
| 84 | 1.4.4.1 | Get Google Maps API production keys |  | 1h | 2012-04-20 | 2012-04-20 | 51 | 2012-04-16 | 2012-04-16 | 1h | 3.88d | 0d | Analyst | 1h | Sriram |
| 85 | 1.4.4.2 | Sign application |  | 5h | 2012-04-20 | 2012-04-24 | 84 | 2012-04-17 | 2012-04-19 | 5h | 3.88d | 0d | Developer | 5h | Weston |
| 86 | 1.4.5 | **Maketing Plan** |  | 1.12d | 2012-03-01 | 2012-03-08 |  | 2012-02-28 | 2012-03-03 | 0.62d | 11.94d |  |  | 17h |  |
| 87 | 1.4.5.1 | Start Marketing | milestone | 0h | 2012-03-01 | 2012-03-01 | 32 | 2012-02-28 | 2012-02-28 | 0h | 11.94d | 0d |  |  |  |
| 88 | 1.4.5.2 | End Marketing | milestone | 0h | 2012-03-08 | 2012-03-08 | 90, 91, 92, 93, 94, 96 | 2012-03-03 | 2012-03-03 | 0h | 11.94d | 8.69d |  |  |  |
| 89 | 1.4.5.3 | **UMN** |  | 0.81d | 2012-03-02 | 2012-03-07 |  | 2012-02-28 | 2012-03-03 | 0.62d | 12.12d |  |  | 12h |  |
| 90 | 1.4.5.3.1 | Contact Daily Publisher |  | 2h | 2012-03-03 | 2012-03-05 | 87 | 2012-02-28 | 2012-02-29 | 2h | 12.56d | 0.62d | Analyst | 2h | Sriram |
| 91 | 1.4.5.3.2 | Contact Orientation and First Year Program |  | 2h | 2012-03-03 | 2012-03-05 | 87 | 2012-02-28 | 2012-02-29 | 2h | 12.56d | 0.62d | Analyst | 2h | Andrey |
| 92 | 1.4.5.3.3 | Contact Student Services |  | 1h | 2012-03-07 | 2012-03-07 | 87 | 2012-02-28 | 2012-02-28 | 1h | 12.25d | 0.31d | Analyst | 1h | Sriram |
| 93 | 1.4.5.3.4 | Set up flyers and Distribute |  | 5h | 2012-03-02 | 2012-03-07 | 87 | 2012-02-28 | 2012-03-03 | 5h | 12.31d | 0.38d | Analyst | 5h | Sriram |
| 94 | 1.4.5.3.5 | Set up facebook |  | 2h | 2012-03-07 | 2012-03-07 | 87 | 2012-02-28 | 2012-02-29 | 2h | 12.12d | 0.19d | Analyst | 2h | Jared |
| 95 | 1.4.5.4 | **Minneapolis Downtown** |  | 1d | 2012-03-02 | 2012-03-08 |  | 2012-02-28 | 2012-03-03 | 0.62d | 11.94d |  |  | 5h |  |
| 96 | 1.4.5.4.1 | Contact Advertisement Papers |  | 5h | 2012-03-02 | 2012-03-08 | 87 | 2012-02-28 | 2012-03-03 | 5h | 11.94d | 0d | Analyst | 5h | Andrey |
| 97 | 2 | **Post Deployment Options** |  | 5d | 2012-04-20 | 2012-05-17 |  | 2012-04-16 | 2012-05-14 | 5d | 0d |  |  | 58h |  |
| 98 | 2.1 | Start Optional Features | milestone | 0h | 2012-04-20 | 2012-04-20 | 51 | 2012-04-16 | 2012-04-16 | 0h | 0d |  |  |  |  |
| 99 | 2.2 | End Optional Features | milestone | 0h | 2012-05-17 | 2012-05-17 | 101, 103, 105 | 2012-05-14 | 2012-05-14 | 0h | 0d |  |  |  |  |
| 100 | 2.3 | **Framework** |  | 1.62d | 2012-04-20 | 2012-04-30 |  | 2012-04-16 | 2012-04-24 | 1.62d | 3.38d |  |  | 13h |  |
| 101 | 2.3.1 | Display List of Businesses |  | 13h | 2012-04-20 | 2012-04-30 | 59, 98 | 2012-04-16 | 2012-04-24 | 13h | 3.38d |  | Developer | 13h | Jon |
| 102 | 2.4 | **Mpls Map** |  | 0.62d | 2012-04-20 | 2012-04-24 |  | 2012-04-16 | 2012-04-18 | 0.62d | 4.38d |  |  | 5h |  |
| 103 | 2.4.1 | Reroute based on Closures |  | 5h | 2012-04-20 | 2012-04-24 | 60, 98 | 2012-04-16 | 2012-04-18 | 5h | 4.38d |  | Developer | 5h | Sriram |

| ID | WBS | Task | Duration | Start | Finish | Predecessors | Baseline start | Baseline finish | Baseline duration | Total slack | Resources | Work | Owner |
| --- | --- | --- | --- | --- | --- | --- | --- | --- | --- | --- | --- | --- | --- |
| 104 | 2.5 | **UMN Twin Cities Map** | 5d | 2012-04-20 | 2012-05-17 |  | 2012-04-16 | 2012-05-14 | 5d | 0d |  | 40h |  |
| 105 | 2.5.1 | Route using Sidewalks | 40h | 2012-04-20 | 2012-05-17 | 60, 98 | 2012-04-16 | 2012-05-14 | 40h | 0d | Developer | 40h | Usha |
